# ACE_Projektplan

Schedule from MS Project, 2005-02-21 to 2005-06-24.
HTI Biel-Bienne

## Calendars

- Standard: Mon off; Tue-Wed 08:00-12:00, 13:00-17:00; Thu-Sun off. Exceptions (off unless hours are given): 2005-02-21 08:00-12:00, 13:00-17:00, 2005-04-15 08:00-12:00, 13:00-17:00, 2005-06-10 08:00-12:00, 13:00-17:00.

## Resources

| Resource | Rate |
| --- | --- |
| Bigler Mark | 150 |
| Räss Simon | 150 |
| Zbinden Lukas | 150 |
| bigler |  |

## Schedule

| ID | WBS | Task | Type | Duration | Start | Finish | Predecessors | Total slack | Free slack | Constraint |
| --- | --- | --- | --- | --- | --- | --- | --- | --- | --- | --- |
| 1 | 1 | **ACE** |  | 39d | 2005-02-21 | 2005-06-24 |  | 0d |  |  |
| 3 | 1.1 | Infrastruktur |  | 32h | 2005-02-21 | 2005-03-01 |  | 35d |  | start no earlier than 2005-02-21 |
| 5 | 1.2 | **Projektmanagement** |  | 18d | 2005-02-21 | 2005-04-15 |  | 3d |  |  |
| 7 | 1.2.1 | Projektantrag |  | 56h | 2005-02-21 | 2005-03-11 |  | 3d | 0d | finish no earlier than 2005-03-11 |
| 8 | 1.2.2 | Pflichtenheft |  | 56h | 2005-03-15 | 2005-04-05 | 7 | 17d | 15d |  |
| 9 | 1.2.3 | Projekthandbuch |  | 72h | 2005-03-22 | 2005-04-15 | 7 | 13d | 11d | start no earlier than 2005-03-22 |
| 10 | 1.2.4 | Projektplan |  | 56h | 2005-03-29 | 2005-04-15 | 7 | 13d | 11d | start no earlier than 2005-03-29 |
| 11 | 1.2.5 | Meilenstein Projektmanagement | milestone | 0d | 2005-04-15 | 2005-04-15 |  | 22d |  | start no earlier than 2005-04-15 |
| 13 | 1.3 | **Algorithmus** |  | 28d | 2005-03-15 | 2005-06-10 |  | 2d | 0d |  |
| 15 | 1.3.1 | Aufbau Know-How |  | 48h | 2005-03-15 | 2005-04-01 | 7 | 3d | 0d | finish no earlier than 2005-04-01 |
| 16 | 1.3.2 | Evaluation Algorithmen |  | 56h | 2005-04-05 | 2005-04-22 | 15 | 3d | 0d | finish no earlier than 2005-04-22 |
| 17 | 1.3.3 | Design Algorithmus |  | 24h | 2005-04-26 | 2005-05-03 | 16 | 3d | 1d | finish no earlier than 2004-05-04 |
| 18 | 1.3.4 | Implementation Algorithmus |  | 88h | 2005-05-10 | 2005-06-10 | 17 | 2d |  | finish no earlier than 2005-06-10 |
| 19 | 1.3.5 | Definition Testfälle |  | 16h | 2005-05-03 | 2005-05-06 |  | 8d | 0d | finish no earlier than 2005-05-06 |
| 20 | 1.3.6 | Erstellung Testframework |  | 40h | 2005-05-10 | 2005-05-24 | 19 | 8d |  | finish no earlier than 2005-05-24 |
| 21 | 1.3.7 | Meilenstein Algorithmus | milestone | 0d | 2005-06-10 | 2005-06-10 |  | 2d |  | finish no earlier than 2005-06-10 |
| 24 | 1.4 | **Netzwerk** |  | 6d | 2005-05-25 | 2005-06-10 |  | 2d | 0d |  |
| 26 | 1.4.1 | Bericht Netzwerk |  | 48h | 2005-05-25 | 2005-06-10 | 8, 9, 10 | 2d |  | start no earlier than 2005-05-25 |
| 27 | 1.4.2 | Meilenstein Netzwerk | milestone | 0d | 2005-06-10 | 2005-06-10 |  | 2d |  | start no earlier than 2005-06-10 |
| 29 | 1.5 | **GUI** |  | 7d | 2005-04-05 | 2005-04-22 |  | 17d | 15d |  |
| 31 | 1.5.1 | Bericht GUI |  | 56h | 2005-04-05 | 2005-04-22 | 7 | 17d |  | finish no earlier than 2005-04-22 |
| 32 | 1.5.2 | Meilenstein GUI | milestone | 0d | 2005-04-22 | 2005-04-22 |  | 17d |  | start no earlier than 2005-04-22 |
| 34 | 1.6 | **Abschluss** |  | 4d | 2005-06-14 | 2005-06-24 |  | 0d |  |  |
| 36 | 1.6.1 | Erfahrungsbericht |  | 16h | 2005-06-14 | 2005-06-17 | 13, 24, 29 | 2d |  | finish no earlier than 2005-06-17 |
| 37 | 1.6.2 | Projektabschluss |  | 16h | 2005-06-21 | 2005-06-24 | 13, 24, 29 | 0d |  | finish no earlier than 2005-06-24 |
